# DQ Scoring Release #2_22_Dec_2019

Schedule from MS Project, 2019-11-12 to 2019-12-31, A marks actual dates.
Infogix

## Calendars

- Standard: Mon-Fri 08:00-12:00, 13:00-17:00; Sat-Sun off. Exceptions (off unless hours are given): 2019-12-25 (Christmas).

## Resources

| Resource |
| --- |
| Shiv |
| Naveen Seth |
| Ajay Gera |
| Rajiv B |
| Chandni Murthy |
| Jagdish Sankar |
| Chhavi |
| Aditya SD |
| Shalabh |
| Naveen |
| Shraddha |

## Schedule

| ID | WBS | Task | Duration | Start | Finish | Predecessors | Complete | Constraint | Resources | Work | Actual work |
| --- | --- | --- | --- | --- | --- | --- | --- | --- | --- | --- | --- |
| 1 | 1 | **DQ Scoring Release#2** | 35d | 2019-11-12 A | 2019-12-31 A |  | 100% |  |  | 756h | 756h |
| 2 | 1.1 | **Sprint 6** | 8d | 2019-11-13 A | 2019-11-22 A |  | 100% |  |  | 160h | 160h |
| 3 | 1.1.1 | E2E Scheduling development | 4d | 2019-11-18 A | 2019-11-21 A |  | 100% | start no earlier than 2019-11-18 | Naveen Seth | 32h | 32h |
| 4 | 1.1.2 | E2E Scheduling UT | 1d | 2019-11-22 A | 2019-11-22 A | 3 | 100% |  | Naveen Seth | 8h | 8h |
| 5 | 1.1.3 | Record Versioning Development | 3d | 2019-11-18 A | 2019-11-20 A |  | 100% | start no earlier than 2019-11-18 | Shiv | 24h | 24h |
| 6 | 1.1.4 | Record Versioning UT | 2d | 2019-11-21 A | 2019-11-22 A | 5 | 100% |  | Shiv | 16h | 16h |
| 7 | 1.1.5 | Design - Populate Fail_Description field in Rule Evaluator with the input field values of failed rules Design | 2d | 2019-11-13 A | 2019-11-14 A |  | 100% | finish no earlier than 2019-11-14 | Ajay Gera | 16h | 16h |
| 8 | 1.1.6 | Add a filter in hierarchy to exclude incorrect relationship due to missing Business Term to Source Column attributes. | 1d | 2019-11-21 A | 2019-11-21 A |  | 100% |  | Shiv | 8h | 8h |
| 9 | 1.1.7 | Check with Franco about the new hierarchy structure/predicate structure | 1d | 2019-11-15 A | 2019-11-15 A |  | 100% | start no earlier than 2019-11-15 | Rajiv B | 8h | 8h |
| 10 | 1.1.8 | It should not be mandatory to link business term with an attribute | 1d | 2019-11-21 A | 2019-11-21 A | 5 | 100% |  | Shiv | 8h | 8h |
| 11 | 1.1.9 | Set up rules that require Regex expression and provide a drop down option during the rule definition to pre-populate fields based upon a selected category so that users wouldn’t have to enter the regex/javascript expression | 2d | 2019-11-15 A | 2019-11-18 A |  | 100% | start no earlier than 2019-11-15 | Shiv | 16h | 16h |
| 12 | 1.1.10 | The dashboard URLs only to be viewed in Govern and not the dashboard showing pipelines. | 1d | 2019-11-19 A | 2019-11-19 A |  | 100% | start no earlier than 2019-11-19 | Naveen | 8h | 8h |
| 13 | 1.1.11 | Sprint 6 Review | 1d | 2019-11-22 A | 2019-11-22 A | 10 | 100% | start no earlier than 2019-11-18 | Shiv; Naveen | 16h | 16h |
| 14 | 1.1.12 | Sprint 6 Release | 1d | 2019-11-22 A | 2019-11-22 A | 10 | 100% |  |  |  |  |
| 15 | 1.2 | **Testing - Sprint 6** | 13.4d | 2019-11-12 A | 2019-11-29 A |  | 100% |  |  | 96h | 96h |
| 16 | 1.2.1 | Creating the mock test data for Bulk Testing | 4d | 2019-11-21 A | 2019-11-27 A | 9FS+4d | 100% |  | Chandni Murthy | 32h | 32h |
| 17 | 1.2.2 | Bulk testing DG/DQ+ Scoring solution configuration | 2d | 2019-11-21 A | 2019-11-29 A | 16 | 100% |  | Chandni Murthy; Jagdish Sankar | 24h | 24h |
| 18 | 1.2.3 | Testing Readiness & Planning | 1d | 2019-11-20 A | 2019-11-20 A |  | 100% | start no earlier than 2019-11-20 | Jagdish Sankar | 8h | 8h |
| 19 | 1.2.4 | Prepare test data & analysis(s) | 1d | 2019-11-22 A | 2019-11-22 A |  | 100% | start no earlier than 2019-11-22 | Jagdish Sankar | 8h | 8h |
| 20 | 1.2.5 | Bug fix and release | 1d | 2019-11-12 A | 2019-11-12 A |  | 100% |  | Shiv; Naveen | 16h | 16h |
| 21 | 1.2.6 | Verify and validate bug fix | 1d | 2019-11-13 A | 2019-11-13 A | 20 | 100% |  | Shraddha | 8h | 8h |
| 22 | 1.3 | **Sprint 7** | 9d | 2019-11-22 A | 2019-12-04 A |  | 100% |  |  | 152h | 152h |
| 23 | 1.3.1 | Development - Populate Fail_Description field in Rule Evaluator with the input field values of failed rules | 2d | 2019-11-22 A | 2019-11-25 A |  | 100% | start no earlier than 2019-11-22 | Shiv | 16h | 16h |
| 24 | 1.3.2 | Processing time/Performance improvement of Scoring Engine - Part B Development | 3d | 2019-11-25 A | 2019-11-27 A |  | 100% | start no earlier than 2019-11-25 | Naveen | 24h | 24h |
| 25 | 1.3.3 | Beautify the output of Score Refresher | 2d | 2019-11-25 A | 2019-11-26 A |  | 100% | finish no earlier than 2019-11-26 | Rajiv B | 16h | 16h |
| 26 | 1.3.4 | Develop the API pagination incase of bulk response | 2d | 2019-11-29 A | 2019-12-02 A | 24FS+1d | 100% |  | Naveen | 16h | 16h |
| 27 | 1.3.5 | Max size of string field in DQ+ 65000 to be researched and impact identified | 1d | 2019-12-03 A | 2019-12-03 A | 26 | 100% |  | Shiv | 8h | 8h |
| 28 | 1.3.6 | Stop the process if we don't get response for status of Exec Ids. For instance, it may happen if server is down. | 1d | 2019-11-29 A | 2019-11-29 A | 23FS+3d | 100% |  | Shiv; Rajiv B | 16h | 16h |
| 29 | 1.3.7 | Detail level logging of posting and response. To check if Item number is in same sequence of posting and can be used to associate asset uids. | 2d | 2019-12-02 A | 2019-12-03 A | 28 | 100% |  | Rajiv B; Shiv | 32h | 32h |
| 30 | 1.3.8 | Sprint 7 UT and Review | 1d | 2019-12-03 A | 2019-12-03 A | 26 | 100% |  | Shiv; Naveen | 16h | 16h |
| 31 | 1.3.9 | Sprint 7 Release | 1d | 2019-12-04 A | 2019-12-04 A | 29 | 100% |  | Naveen | 8h | 8h |

| ID | WBS | Task | Type | Duration | Start | Finish | Predecessors | Complete | Constraint | Resources | Work | Actual work |
| --- | --- | --- | --- | --- | --- | --- | --- | --- | --- | --- | --- | --- |
| 32 | 1.4 | **Testing - Carried forward items of Sprint 6 and Sprint 7** |  | 10d | 2019-12-03 A | 2019-12-16 A |  | 100% |  |  | 80h | 80h |
| 33 | 1.4.1 | Stabilization of code |  | 2d | 2019-12-03 A | 2019-12-04 A | 26 | 100% |  | Jagdish Sankar | 16h | 16h |
| 34 | 1.4.2 | Bulk testing Day1 Execution |  | 1d | 2019-12-05 A | 2019-12-05 A | 33 | 100% |  | Shraddha | 8h | 8h |
| 35 | 1.4.3 | Testing of Record Versioning and E2E Scheduling |  | 1d | 2019-12-06 A | 2019-12-06 A | 34 | 100% |  | Chhavi | 8h | 8h |
| 36 | 1.4.4 | Test Execution |  | 3d | 2019-12-10 A | 2019-12-12 A | 35FS+1d | 100% |  | Chhavi | 24h | 24h |
| 37 | 1.4.5 | Bug fix and release |  | 1d | 2019-12-13 A | 2019-12-13 A | 36 | 100% |  | Shiv; Naveen | 16h | 16h |
| 38 | 1.4.6 | Verify and validate bug fix |  | 1d | 2019-12-16 A | 2019-12-16 A | 37 | 100% |  | Shraddha | 8h | 8h |
| 39 | 1.5 | **Sprint 8** |  | 5d | 2019-12-05 A | 2019-12-11 A |  | 100% |  |  | 80h | 80h |
| 40 | 1.5.1 | It should not be mandatory to prefix attribute with data entity names |  | 3d | 2019-12-05 A | 2019-12-09 A | 31 | 100% |  | Shiv; Naveen | 48h | 48h |
| 41 | 1.5.2 | Any filelds that we are creating as a part of framework in Govern to be marked mandatory |  | 1d | 2019-12-10 A | 2019-12-10 A | 40 | 100% |  | Shiv | 8h | 8h |
| 42 | 1.5.3 | Sprint 8 UT and Review |  | 1d | 2019-12-10 A | 2019-12-10 A | 40 | 100% |  | Naveen; Shiv | 16h | 16h |
| 43 | 1.5.4 | Sprint 8 Release |  | 1d | 2019-12-11 A | 2019-12-11 A | 42 | 100% |  | Shiv | 8h | 8h |
| 44 | 1.6 | **Testing Sprint 8** |  | 4d | 2019-12-16 A | 2019-12-19 A |  | 100% |  |  | 40h | 40h |
| 45 | 1.6.1 | Testing Readiness & Planning |  | 1d | 2019-12-16 A | 2019-12-16 A | 37, 38 | 100% |  | Jagdish Sankar | 8h | 8h |
| 46 | 1.6.2 | Test Execution |  | 1d | 2019-12-17 A | 2019-12-17 A | 45 | 100% |  | Shraddha | 8h | 8h |
| 47 | 1.6.3 | Bug fix and release |  | 1d | 2019-12-18 A | 2019-12-18 A | 46 | 100% |  | Naveen; Shiv | 16h | 16h |
| 48 | 1.6.4 | Verify and validate bug fix |  | 1d | 2019-12-19 A | 2019-12-19 A | 47 | 100% |  | Jagdish Sankar | 8h | 8h |
| 49 | 1.7 | **Sprint 9** |  | 4d | 2019-12-20 A | 2019-12-26 A |  | 100% |  |  | 84h | 84h |
| 50 | 1.7.1 | Semantic based rules |  | 2d | 2019-12-20 A | 2019-12-23 A |  | 100% | start no earlier than 2019-12-20 | Naveen; Rajiv B | 32h | 32h |
| 51 | 1.7.2 | DQ Result HTML Change | manual | 2d | 2019-12-20 A | 2019-12-23 A |  | 100% |  | Shiv; Rajiv B | 32h | 32h |
| 52 | 1.7.3 | Sprint 9 UT and review |  | 1d | 2019-12-24 A | 2019-12-24 A | 50 | 100% |  | Naveen; Shiv | 12h | 12h |
| 53 | 1.7.4 | Sprint 9 Release |  | 1d | 2019-12-26 A | 2019-12-26 A | 52 | 100% |  | Naveen | 8h | 8h |
| 54 | 1.8 | **Testing Sprint 9** |  | 4d | 2019-12-24 A | 2019-12-30 A |  | 100% |  |  |  |  |
| 55 | 1.8.1 | Testing Readiness & Planning |  | 1d | 2019-12-24 A | 2019-12-24 A | 50 | 100% |  |  |  |  |
| 56 | 1.8.2 | Test Execution |  | 1d | 2019-12-26 A | 2019-12-26 A | 55 | 100% |  |  |  |  |
| 57 | 1.8.3 | Bug fix and release |  | 1d | 2019-12-27 A | 2019-12-27 A | 56 | 100% |  |  |  |  |
| 58 | 1.8.4 | Verify and validate bug fix |  | 1d | 2019-12-30 A | 2019-12-30 A | 57 | 100% |  |  |  |  |
| 59 | 1.9 | User Manual for Release #2 |  | 1d | 2019-12-24 A | 2019-12-24 A | 50 | 100% |  | Naveen; Shiv | 16h | 16h |
| 60 | 1.10 | Package Release including Project Release Notes, Imports, Usage Document and Fix Details |  | 1d | 2019-12-26 A | 2019-12-26 A | 59 | 100% |  | Naveen; Shiv | 16h | 16h |
| 61 | 1.11 | Consolidated Release Testing |  | 2d | 2019-12-30 A | 2019-12-31 A | 60FS+1d, 48 | 100% |  | Jagdish Sankar; Shraddha | 32h | 32h |
